# Cronograma

How a schedule from MS Project changed from version to version. A marks actual dates.

## Version 1 (saved 2018-05-27, file Cronograma_antigo.mpp)

Note of the change: Implementando Consultar Mapa

| ID | WBS | Task | Duration | Start | Finish | Predecessors | Complete | Total float |
| --- | --- | --- | --- | --- | --- | --- | --- | --- |
| 1 | 1 | **SuperMaps** | 41.62d | 2018-04-10 08:00 A | 2018-06-06 13:56 |  | 2% | 0d |
| 2 | 1.1 | **Prospecção** | 1.62d | 2018-04-10 08:00 A | 2018-04-11 14:00 |  |  | 0d |
| 3 |  | Reunião com o Cliente | 5h | 2018-04-10 08:00 A | 2018-04-10 14:00 |  |  | 0d |
| 4 |  | Redigir Ata de Reunião | 8h | 2018-04-10 10:00 A | 2018-04-11 14:00 | 3 |  | -1.12d |
| 5 | 1.2 | **Análise** | 0.25d | 2018-04-10 13:00 A | 2018-04-10 15:00 A | 4 | 100% |  |
| 6 |  | Redigir Documento de Requisitos | 0h | 2018-04-10 13:00 A | 2018-04-10 13:00 A | 4 | 100% |  |
| 7 |  | Revisar Documento de Requisitos | 0h | 2018-04-10 14:00 A | 2018-04-10 14:00 A | 6 | 100% |  |
| 8 |  | Aprovação do Cliente | 0h | 2018-04-10 15:00 A | 2018-04-10 15:00 A | 7 | 100% |  |
| 9 | 1.3 | **Planejamento** | 0.62d | 2018-04-11 08:00 A | 2018-04-11 14:00 A | 8 | 100% |  |
| 10 |  | Reunir com a Equipe | 1h | 2018-04-11 08:00 A | 2018-04-11 09:00 A | 8 | 100% |  |
| 11 |  | Redigir Plano de Projeto | 2h | 2018-04-11 08:00 A | 2018-04-11 10:00 A | 8 | 100% |  |
| 12 |  | Redigir EAP | 1h | 2018-04-11 13:00 A | 2018-04-11 14:00 A | 11 | 100% |  |
| 13 | 1.4 | **Desenvolvimento** | 9.56d | 2018-05-21 15:00 | 2018-06-04 10:30 | 12FS+225h |  | 0d |
| 14 | 1.4.1 | **Release 1** | 2.12d | 2018-05-21 15:00 | 2018-05-23 16:00 | 12 |  | 0d |
| 15 |  | Implementar [RF01] Importar Banco de Dados do Supermercado | 8h | 2018-05-21 15:00 | 2018-05-22 15:00 | 12 |  | 1.12d |
| 16 |  | Implementar [RF02] Cadastrar Mapa | 10h | 2018-05-21 15:00 | 2018-05-22 17:00 | 12 |  | 0d |
| 17 |  | Implementar [RF03] Editar Mapa | 5h | 2018-05-23 08:00 | 2018-05-23 14:00 | 16 |  | 0.25d |
| 18 |  | Implementar [RF04] Remover Mapa | 3h | 2018-05-23 08:00 | 2018-05-23 11:00 | 16 |  | 0.5d |
| 19 |  | Implementar [RF05] Consultar Mapa | 7h | 2018-05-23 08:00 | 2018-05-23 16:00 | 16 |  | 0d |
| 20 | 1.4.2 | **Release 2** | 2.25d | 2018-05-23 16:00 | 2018-05-28 09:00 | 14 |  | 0d |
| 21 |  | Implementar [RF06] Cadastrar Prateleira | 8h | 2018-05-23 16:00 | 2018-05-24 16:00 | 16 |  | 0d |
| 22 |  | Implementar [RF07] Editar Prateleira | 7h | 2018-05-24 16:00 | 2018-05-25 15:00 | 21 |  | 0.38d |
| 23 |  | Implementar [RF08] Consultar Prateleira | 5h | 2018-05-24 16:00 | 2018-05-25 12:00 | 21 |  | 0.62d |
| 24 |  | Implementar [RF09] Remover Prateleira | 5h | 2018-05-24 16:00 | 2018-05-25 12:00 | 21 |  | 0.62d |
| 25 |  | Implementar [RF10] Inserir Prateleira no Mapa | 10h | 2018-05-24 16:00 | 2018-05-28 09:00 | 21 |  | 0d |
| 26 |  | Implementar [RF11] Inserir Produtos na Prateleira | 9h | 2018-05-24 16:00 | 2018-05-25 17:00 | 21 |  | 0.12d |
| 27 | 1.4.3 | **Release 3** | 2.75d | 2018-05-28 09:00 | 2018-05-30 16:00 | 20 |  | 0d |
| 28 |  | Implementar [RF12] Remover Produto na Prateleira | 5h | 2018-05-28 09:00 | 2018-05-28 15:00 | 26 |  | 0d |
| 29 |  | Implementar [RF13] Atualizar Produto na Prateleira | 5h | 2018-05-28 09:00 | 2018-05-28 15:00 | 26 |  | 0d |
| 30 |  | Implementar [RF14] Consultar Produto | 5h | 2018-05-28 09:00 | 2018-05-28 15:00 | 26 |  | 0d |
| 31 |  | Implementar [RF15] Localizar Produto no Supermercado | 9h | 2018-05-28 15:00 | 2018-05-29 16:00 | 26, 28, 29, 30 |  | 0d |
| 32 |  | Implementar [RF16] Calcular menor caminho para compras | 8h | 2018-05-29 16:00 | 2018-05-30 16:00 | 31 |  | 0d |
| 33 | 1.4.4 | **Release 4** | 2.44d | 2018-05-30 16:00 | 2018-06-04 10:30 | 32 |  | 0d |
| 34 |  | Implementar [RF17] Emissão do menor caminho | 10h | 2018-05-30 16:00 | 2018-06-01 09:00 | 32 |  | 0d |
| 35 |  | Implementar [RF18] Ranking de Produtos | 6h | 2018-05-30 16:00 | 2018-05-31 14:00 | 31 |  | 3.99d |
| 36 |  | Implementar [RF19] Relatório de itens mais visitados no supermercado | 9.5h | 2018-06-01 09:00 | 2018-06-04 10:30 | 34 |  | 0d |
| 37 | 1.5 | **Fechamento** | 2.31d | 2018-06-04 10:30 | 2018-06-06 13:56 | 36 |  | 0d |
| 38 |  | Documento de Aprovação do Cliente | 18.44h | 2018-06-04 10:30 | 2018-06-06 13:56 | 36 |  | 0d |

## Version 2 (saved 2018-05-27, file Cronograma.mpp)

Note of the change: Implementando Consultar Mapa

Last finish 2018-06-06 → 2018-07-06 (+30d). Complete tasks 6 → 15.

Added:

| ID | Task | Duration | Start | Finish | Predecessors | Resources |
| --- | --- | --- | --- | --- | --- | --- |
| 9 | **Projeto** | 1.38d | 2018-06-04 A | 2018-06-05 A | 8 |  |
| 10 | **Diagrama de Classes** | 0.88d | 2018-06-04 A | 2018-06-05 A | 8 |  |
| 11 | Elaborar Diagrama de Classes | 5h | 2018-06-04 A | 2018-06-05 A | 8 | Renam Makoto Aono |
| 12 | Revisar Diagrama de Classes | 2h | 2018-06-05 A | 2018-06-05 A | 11 | Gabriel Oraboni Carvalho |
| 13 | Redigir MRB | 2h | 2018-06-04 A | 2018-06-04 A | 8 | Ana Caroline Costa Passos |
| 14 | **Modelo entidade relacionamento** | 1.38d | 2018-06-04 A | 2018-06-05 A |  |  |
| 15 | Elaborar MER | 11h | 2018-06-04 A | 2018-06-05 A | 8 | Vinícius de Oliveira Souza |
| 16 | Revisar MER | 5h | 2018-06-04 A | 2018-06-05 A | 8 | Renam Makoto Aono |
| 21 | **Monitoramento e Controle** | 0.75d | 2018-06-06 A | 2018-06-07 A | 20 |  |
| 22 | Definir Processo de Monitoramento e Controle do Projeto | 6h | 2018-06-06 A | 2018-06-07 A | 20 | Renam Makoto Aono |
| 23 | **Controle de Mudanças** | 1.12d | 2018-06-07 A | 2018-06-08 A | 22 |  |
| 24 | Definir Processo de Mudanças do Projeto | 9h | 2018-06-07 A | 2018-06-08 A | 22 | Gabriel Oraboni Carvalho |

Changed:

| ID | Task | Start | Finish | Duration | Complete | Total float | Predecessors | Other |
| --- | --- | --- | --- | --- | --- | --- | --- | --- |
| 1 | **SuperMaps** | 2018-04-10 08:00 A → 2018-05-28 A (+48d) | 2018-06-06 13:56 → 2018-07-06 (+30d) | 41.62d → 29.12d | 2% → 30% |  |  |  |
| 2 | **Prospecção** | 2018-04-10 08:00 A → 2018-05-28 A (+48d) | 2018-04-11 14:00 → 2018-05-29 A (+48d) | 1.62d → 1.5d | 0% → 100% | 0d → none |  |  |
| 3 | Reunião com o Cliente | 2018-04-10 08:00 A → 2018-05-28 A (+48d) | 2018-04-10 14:00 → 2018-05-28 A (+48d) | 5h → 6h | 0% → 100% | 0d → none |  |  |
| 4 | Redigir Ata de Reunião | 2018-04-10 10:00 A → 2018-05-28 A (+48d) | 2018-04-11 14:00 → 2018-05-29 A (+48d) | 8h → 6h | 0% → 100% | -1.12d → none |  |  |
| 5 | **Análise** | 2018-04-10 13:00 A → 2018-05-29 A (+49d) | 2018-04-10 15:00 A → 2018-06-05 A (+56d) | 0.25d → 5.5d |  |  |  |  |
| 6 | Redigir Documento de Requisitos | 2018-04-10 13:00 A → 2018-05-29 A (+49d) | 2018-04-10 13:00 A → 2018-05-31 A (+51d) | 0h → 13h |  |  |  |  |
| 7 | Revisar Documento de Requisitos | 2018-04-10 14:00 A → 2018-05-31 A (+51d) | 2018-04-10 14:00 A → 2018-06-01 A (+52d) | 0h → 15h |  |  |  |  |
| 8 | Aprovação do Cliente | 2018-04-10 15:00 A → 2018-06-04 A (+55d) | 2018-04-10 15:00 A → 2018-06-04 A (+55d) | 0h → 5h |  |  |  |  |
| 17 | **Planejamento** | 2018-04-11 08:00 A → 2018-06-04 A (+54d) | 2018-04-11 14:00 A → 2018-06-06 A (+56d) | 0.62d → 2.25d |  |  |  |  |
| 18 | Reunir com a Equipe | 2018-04-11 08:00 A → 2018-06-04 A (+54d) | 2018-04-11 09:00 A → 2018-06-05 A (+55d) | 1h → 1d |  |  |  | resources Ana Caroline Costa Passos → Gabriel Oraboni Carvalho |
| 19 | Redigir Plano de Projeto | 2018-04-11 08:00 A → 2018-06-04 A (+54d) | 2018-04-11 10:00 A → 2018-06-05 A (+55d) | 2h → 10h |  |  |  |  |
| 20 | Redigir EAP | 2018-04-11 13:00 A → 2018-06-05 A (+55d) | 2018-04-11 14:00 A → 2018-06-06 A (+56d) | 1h → 1d |  |  |  | resources Gabriel Oraboni Carvalho → Ana Caroline Costa Passos |
| 25 | **Desenvolvimento** | 2018-05-21 15:00 → 2018-06-06 (+16d) | 2018-06-04 10:30 → 2018-07-03 (+29d) | 9.56d → 18.88d |  |  | 20FS+225h → 20 |  |
| 26 | **Release 1** | 2018-05-21 15:00 → 2018-06-06 (+16d) | 2018-05-23 16:00 → 2018-06-13 (+21d) | 2.12d → 4.62d |  |  |  |  |
| 27 | Implementar [RF01] Importar Banco de Dados do Supermercado | 2018-05-21 15:00 → 2018-06-06 (+16d) | 2018-05-22 15:00 → 2018-06-11 (+20d) | 8h → 20h |  | 1.12d → 2.12d |  |  |
| 28 | Implementar [RF02] Cadastrar Mapa | 2018-05-21 15:00 → 2018-06-06 (+16d) | 2018-05-22 17:00 → 2018-06-12 (+21d) | 10h → 27h |  |  |  | resources Eduardo Faggiani; Renam Makoto Aono → Eduardo Faggiani |
| 29 | Implementar [RF03] Editar Mapa | 2018-05-23 08:00 → 2018-06-12 (+20d) | 2018-05-23 14:00 → 2018-06-13 (+21d) | 5h → 10h |  | 0.25d → 0d |  |  |
| 30 | Implementar [RF04] Remover Mapa | 2018-05-23 08:00 → 2018-06-12 (+20d) | 2018-05-23 11:00 → 2018-06-12 (+20d) | 3h → 5h |  | 0.5d → 0.62d |  |  |
| 31 | Implementar [RF05] Consultar Mapa | 2018-05-23 08:00 → 2018-06-12 (+20d) | 2018-05-23 16:00 → 2018-06-12 (+20d) | 7h → 5h |  | 0d → 0.62d |  |  |
| 32 | **Release 2** | 2018-05-23 16:00 → 2018-06-13 (+21d) | 2018-05-28 09:00 → 2018-06-20 (+23d) | 2.25d → 4.75d |  |  |  |  |
| 33 | Implementar [RF06] Cadastrar Prateleira | 2018-05-23 16:00 → 2018-06-13 (+21d) | 2018-05-24 16:00 → 2018-06-18 (+25d) | 8h → 23h |  |  |  |  |
| 34 | Implementar [RF07] Editar Prateleira | 2018-05-24 16:00 → 2018-06-18 (+25d) | 2018-05-25 15:00 → 2018-06-19 (+25d) | 7h → 8h |  | 0.38d → 0.88d |  |  |
| 35 | Implementar [RF08] Consultar Prateleira | 2018-05-24 16:00 → 2018-06-18 (+25d) | 2018-05-25 12:00 → 2018-06-19 (+25d) | 5h → 9h |  | 0.62d → 0.75d |  |  |
| 36 | Implementar [RF09] Remover Prateleira | 2018-05-24 16:00 → 2018-06-18 (+25d) | 2018-05-25 12:00 → 2018-06-18 (+24d) |  |  | 0.62d → 1.25d |  |  |
| 37 | Implementar [RF10] Inserir Prateleira no Mapa | 2018-05-24 16:00 → 2018-06-18 (+25d) | 2018-05-28 09:00 → 2018-06-20 (+23d) | 10h → 15h |  |  |  |  |
| 38 | Implementar [RF11] Inserir Produtos na Prateleira | 2018-05-24 16:00 → 2018-06-18 (+25d) | 2018-05-25 17:00 → 2018-06-19 (+25d) | 9h → 10h |  | 0.12d → 0.62d |  |  |
| 39 | **Release 3** | 2018-05-28 09:00 → 2018-06-20 (+23d) | 2018-05-30 16:00 → 2018-06-26 (+27d) | 2.75d → 4.75d |  |  |  |  |
| 40 | Implementar [RF12] Remover Produto na Prateleira | 2018-05-28 09:00 → 2018-06-20 (+23d) | 2018-05-28 15:00 → 2018-06-21 (+24d) | 5h → 1d |  |  |  |  |
| 41 | Implementar [RF13] Atualizar Produto na Prateleira | 2018-05-28 09:00 → 2018-06-20 (+23d) | 2018-05-28 15:00 → 2018-06-21 (+24d) | 5h → 1d |  |  |  |  |
| 42 | Implementar [RF14] Consultar Produto | 2018-05-28 09:00 → 2018-06-20 (+23d) | 2018-05-28 15:00 → 2018-06-21 (+24d) | 5h → 1d |  |  |  |  |
| 43 | Implementar [RF15] Localizar Produto no Supermercado | 2018-05-28 15:00 → 2018-06-21 (+24d) | 2018-05-29 16:00 → 2018-06-25 (+27d) | 9h → 15h |  |  |  |  |
| 44 | Implementar [RF16] Calcular menor caminho para compras | 2018-05-29 16:00 → 2018-06-25 (+27d) | 2018-05-30 16:00 → 2018-06-26 (+27d) | 8h → 15h |  |  |  |  |
| 45 | **Release 4** | 2018-05-30 16:00 → 2018-06-27 (+28d) | 2018-06-04 10:30 → 2018-07-03 (+29d) | 2.44d → 4.75d |  |  |  |  |
| 46 | Implementar [RF17] Emissão do menor caminho | 2018-05-30 16:00 → 2018-06-27 (+28d) | 2018-06-01 09:00 → 2018-06-28 (+27d) | 10h → 15h |  |  |  |  |
| 47 | Implementar [RF18] Ranking de Produtos | 2018-05-30 16:00 → 2018-06-27 (+28d) | 2018-05-31 14:00 → 2018-06-28 (+28d) | 6h → 15h |  | 3.99d → 5.25d |  |  |
| 48 | Implementar [RF19] Relatório de itens mais visitados no supermercado | 2018-06-01 09:00 → 2018-06-28 (+27d) | 2018-06-04 10:30 → 2018-07-03 (+29d) | 9.5h → 23h |  |  |  |  |
| 49 | **Fechamento** | 2018-06-04 10:30 → 2018-07-03 (+29d) | 2018-06-06 13:56 → 2018-07-06 (+30d) | 2.31d → 2.38d |  |  |  |  |
| 50 | Documento de Aprovação do Cliente | 2018-06-04 10:30 → 2018-07-03 (+29d) | 2018-06-06 13:56 → 2018-07-06 (+30d) | 18.44h → 19h |  |  |  | resources Vinícius de Oliveira Souza → Ana Caroline Costa Passos |

## Version 3 (saved 2018-05-30, file Cronograma.mpp)

Note of the change: Iniciando Crud Prateleira

Last finish stays 2018-07-06. Complete tasks 15 → 19.

Changed:

| ID | Task | Start | Finish | Complete | Total float |
| --- | --- | --- | --- | --- | --- |
| 1 | **SuperMaps** |  |  | 30% → 42% |  |
| 25 | **Desenvolvimento** | 2018-06-06 A |  | 0% → 19% | 0d → 2.38d |
| 26 | **Release 1** | 2018-06-06 A |  | 0% → 70% |  |
| 28 | Implementar [RF02] Cadastrar Mapa | 2018-06-06 A | 2018-06-12 A | 0% → 100% | 0d → none |
| 29 | Implementar [RF03] Editar Mapa | 2018-06-12 A | 2018-06-13 A | 0% → 100% | 0d → none |
| 30 | Implementar [RF04] Remover Mapa | 2018-06-12 A | 2018-06-12 A | 0% → 100% | 0.62d → none |
| 31 | Implementar [RF05] Consultar Mapa | 2018-06-12 A | 2018-06-12 A | 0% → 100% | 0.62d → none |

## Version 4 (saved 2018-06-04, file Cronograma.mpp)

Note of the change: Consertanto prateleiras

Last finish stays 2018-07-06. Complete tasks 19 → 24.

Added:

| ID | Task | Duration | Start | Finish | Predecessors | Resources |
| --- | --- | --- | --- | --- | --- | --- |
| 28 | Implementar [RF02] Cadastrar Usuário | 10h | 2018-06-06 A | 2018-06-08 A | 20 | Eduardo Faggiani |
| 29 | Implementar [RF03] Consultar Usuário | 6h | 2018-06-08 A | 2018-06-08 A | 28 | Vinícius de Oliveira Souza |
| 30 | Implementar [RF04] Editar Usuário | 7h | 2018-06-08 A | 2018-06-08 A | 28 | Renam Makoto Aono |
| 31 | Implementar [RF05] Remover Usuário | 8h | 2018-06-08 A | 2018-06-11 A | 28 | Ana Caroline Costa Passos |
| 34 | Implementar [RF07] Editar Mapa | 5h | 2018-06-13 A | 2018-06-14 A | 32 | Ana Caroline Costa Passos |
| 35 | Implementar [RF08] Remover Mapa | 5h | 2018-06-13 A | 2018-06-14 A | 32 | Vinícius de Oliveira Souza |
| 36 | Implementar [RF09] Consultar Mapa | 5h | 2018-06-13 A | 2018-06-14 A | 32 | Gabriel Oraboni Carvalho |

Removed: 29 Implementar [RF03] Editar Mapa; 30 Implementar [RF04] Remover Mapa; 31 Implementar [RF05] Consultar Mapa

Changed:

| ID | Task | Start | Finish | Duration | Complete | Total float | Predecessors | Other |
| --- | --- | --- | --- | --- | --- | --- | --- | --- |
| 1 | **SuperMaps** |  |  |  | 42% → 48% |  |  |  |
| 25 | **Desenvolvimento** |  |  |  | 19% → 28% |  |  |  |
| 26 | **Release 1** |  | 2018-06-13 A |  | 70% → 100% | 0d → none |  |  |
| 27 | Implementar [RF01] Cadastrar Produto | 2018-06-06 A | 2018-06-11 → 2018-06-07 A (-4d) | 20h → 5h | 0% → 100% | 2.12d → none |  | was named Implementar [RF01] Importar Banco de Dados do Supermercado |
| 32 | Implementar [RF06] Cadastrar Mapa | 2018-06-06 A → 2018-06-11 A (+5d) | 2018-06-12 A → 2018-06-13 A (+1d) | 27h → 19h |  |  | 20 → 31 | was named Implementar [RF02] Cadastrar Mapa |
| 33 | **Release 2** | 2018-06-13 A |  |  | 0% → 18% |  |  |  |
| 37 | Implementar [RF10] Cadastrar Prateleira |  |  |  |  |  |  | was named Implementar [RF06] Cadastrar Prateleira; resources Ana Caroline Costa Passos → Renam Makoto Aono |
| 38 | Implementar [RF11] Editar Prateleira |  |  |  |  |  |  | was named Implementar [RF07] Editar Prateleira |
| 39 | Implementar [RF12] Consultar Prateleira |  |  |  |  |  |  | was named Implementar [RF08] Consultar Prateleira |
| 40 | Implementar [RF13] Remover Prateleira |  |  |  |  |  |  | was named Implementar [RF09] Remover Prateleira |
| 41 | Implementar [RF14] Inserir Prateleira no Mapa |  |  |  |  |  |  | was named Implementar [RF10] Inserir Prateleira no Mapa |
| 42 | Implementar [RF15] Inserir Produtos na Prateleira |  |  |  |  |  |  | was named Implementar [RF11] Inserir Produtos na Prateleira |
| 44 | Implementar [RF16] Remover Produto na Prateleira |  |  |  |  |  |  | was named Implementar [RF12] Remover Produto na Prateleira |
| 45 | Implementar [RF17] Atualizar Produto na Prateleira |  |  |  |  |  |  | was named Implementar [RF13] Atualizar Produto na Prateleira |
| 46 | Implementar [RF18] Consultar Produto |  |  |  |  |  |  | was named Implementar [RF14] Consultar Produto |
| 47 | Implementar [RF19] Localizar Produto no Supermercado |  |  |  |  |  |  | was named Implementar [RF15] Localizar Produto no Supermercado |
| 48 | Implementar [RF20] Calcular menor caminho para compras |  |  |  |  |  |  | was named Implementar [RF16] Calcular menor caminho para compras |
| 50 | Implementar [RF21] Emissão do menor caminho |  |  |  |  |  |  | was named Implementar [RF17] Emissão do menor caminho |
| 51 | Implementar [RF22] Ranking de Produtos |  |  |  |  |  |  | was named Implementar [RF18] Ranking de Produtos |
| 52 | Implementar [RF23] Relatório de itens mais visitados no supermercado |  |  |  |  |  |  | was named Implementar [RF19] Relatório de itens mais visitados no supermercado |

## Version 5 (saved 2018-06-04, file Cronograma.mpp)

Note of the change: Finalização CRUD prateleira e documentar Status Report

Last finish 2018-07-06 → 2018-06-11 (-25d). Complete tasks 24 → 27.

Removed: 12 Revisar Diagrama de Classes; 13 Redigir MRB; 16 Revisar MER

Changed:

| ID | Task | Start | Finish | Duration | Complete | Total float | Predecessors |
| --- | --- | --- | --- | --- | --- | --- | --- |
| 1 | **SuperMaps** | 2018-05-28 A → 2018-05-28 08:00 A | 2018-07-06 → 2018-06-11 09:00 (-25d) | 29.12d → 10.12d | 48% → 69% |  |  |
| 2 | **Prospecção** | 2018-05-28 A → 2018-05-28 08:00 A | 2018-05-29 A → 2018-05-28 12:00 A (-1d) | 1.5d → 0.5d |  |  |  |
| 3 | Reunião com o Cliente | 2018-05-28 A → 2018-05-28 08:00 A | 2018-05-28 A → 2018-05-28 10:00 A | 6h → 2h |  |  |  |
| 4 | Redigir Ata de Reunião | 2018-05-28 A → 2018-05-28 10:00 A | 2018-05-29 A → 2018-05-28 12:00 A (-1d) | 6h → 2h |  |  |  |
| 5 | **Análise** | 2018-05-29 A → 2018-05-28 13:00 A (-1d) | 2018-06-05 A → 2018-05-30 11:00 A (-6d) | 5.5d → 1.88d |  |  |  |
| 6 | Redigir Documento de Requisitos | 2018-05-29 A → 2018-05-28 13:00 A (-1d) | 2018-05-31 A → 2018-05-29 10:00 A (-2d) | 13h → 6h |  |  |  |
| 7 | Revisar Documento de Requisitos | 2018-05-31 A → 2018-05-29 10:00 A (-2d) | 2018-06-01 A → 2018-05-29 16:00 A (-3d) | 15h → 5h |  |  |  |
| 8 | Aprovação do Cliente | 2018-06-04 A → 2018-05-29 16:00 A (-6d) | 2018-06-04 A → 2018-05-30 11:00 A (-5d) | 5h → 4h |  |  |  |
| 9 | **Projeto** | 2018-06-04 A → 2018-05-30 11:00 A (-5d) | 2018-06-05 A → 2018-05-30 15:00 A (-6d) | 1.38d → 0.38d |  |  |  |
| 10 | **Diagrama de Classes** | 2018-06-04 A → 2018-05-30 11:00 A (-5d) | 2018-06-05 A → 2018-05-30 14:00 A (-6d) | 0.88d → 0.25d |  |  |  |
| 11 | Elaborar Diagrama de Classes | 2018-06-04 A → 2018-05-30 11:00 A (-5d) | 2018-06-05 A → 2018-05-30 14:00 A (-6d) | 5h → 2h |  |  |  |
| 12 | **Modelo entidade relacionamento** | 2018-06-04 A → 2018-05-30 14:00 A (-5d) | 2018-06-05 A → 2018-05-30 15:00 A (-6d) | 1.38d → 0.12d |  |  |  |
| 13 | Elaborar MER | 2018-06-04 A → 2018-05-30 14:00 A (-5d) | 2018-06-05 A → 2018-05-30 15:00 A (-6d) | 11h → 1h |  |  | 8 → 11 |
| 14 | **Planejamento** | 2018-06-04 A → 2018-05-30 11:00 A (-5d) | 2018-06-06 A → 2018-05-31 09:00 A (-6d) | 2.25d → 0.75d |  |  |  |
| 15 | Reunir com a Equipe | 2018-06-04 A → 2018-05-30 11:00 A (-5d) | 2018-06-05 A → 2018-05-30 14:00 A (-6d) | 1d → 2h |  |  |  |
| 16 | Redigir Plano de Projeto | 2018-06-04 A → 2018-05-30 14:00 A (-5d) | 2018-06-05 A → 2018-05-30 16:00 A (-6d) | 10h → 2h |  |  | 8 → 15 |
| 17 | Redigir EAP | 2018-06-05 A → 2018-05-30 16:00 A (-6d) | 2018-06-06 A → 2018-05-31 09:00 A (-6d) | 1d → 2h |  |  |  |
| 18 | **Monitoramento e Controle** | 2018-06-06 A → 2018-05-31 09:00 A (-6d) | 2018-06-07 A → 2018-05-31 11:00 A (-7d) | 0.75d → 0.25d |  |  |  |
| 19 | Definir Processo de Monitoramento e Controle do Projeto | 2018-06-06 A → 2018-05-31 09:00 A (-6d) | 2018-06-07 A → 2018-05-31 11:00 A (-7d) | 6h → 2h |  |  |  |
| 20 | **Controle de Mudanças** | 2018-06-07 A → 2018-05-31 11:00 A (-7d) | 2018-06-08 A → 2018-05-31 15:00 A (-8d) | 1.12d → 0.38d |  |  |  |
| 21 | Definir Processo de Mudanças do Projeto | 2018-06-07 A → 2018-05-31 11:00 A (-7d) | 2018-06-08 A → 2018-05-31 15:00 A (-8d) | 9h → 3h |  |  |  |
| 22 | **Desenvolvimento** | 2018-06-06 A → 2018-05-31 09:00 A (-6d) | 2018-07-03 → 2018-06-08 11:00 (-25d) | 18.88d → 6.25d | 28% → 58% | 2.38d → 0d |  |
| 23 | **Release 1** | 2018-06-06 A → 2018-05-31 09:00 A (-6d) | 2018-06-13 A → 2018-06-01 14:00 A (-12d) | 4.62d → 1.5d |  |  |  |
| 24 | Implementar [RF01] Cadastrar Produto | 2018-06-06 A → 2018-05-31 09:00 A (-6d) | 2018-06-07 A → 2018-05-31 12:00 A (-7d) | 5h → 3h |  |  |  |
| 25 | Implementar [RF02] Cadastrar Usuário | 2018-06-06 A → 2018-05-31 09:00 A (-6d) | 2018-06-08 A → 2018-05-31 12:00 A (-8d) | 10h → 3h |  |  |  |
| 26 | Implementar [RF03] Consultar Usuário | 2018-06-08 A → 2018-05-31 13:00 A (-8d) | 2018-06-08 A → 2018-05-31 15:00 A (-8d) | 6h → 2h |  |  |  |
| 27 | Implementar [RF04] Editar Usuário | 2018-06-08 A → 2018-05-31 15:00 A (-8d) | 2018-06-08 A → 2018-05-31 17:00 A (-8d) | 7h → 2h |  |  | 25 → 26 |
| 28 | Implementar [RF05] Remover Usuário | 2018-06-08 A → 2018-06-01 08:00 A (-7d) | 2018-06-11 A → 2018-06-01 10:00 A (-10d) | 8h → 2h |  |  | 25 → 27 |
| 29 | Implementar [RF06] Cadastrar Mapa | 2018-06-11 A → 2018-06-01 10:00 A (-10d) | 2018-06-13 A → 2018-06-01 14:00 A (-12d) | 19h → 3h |  |  |  |
| 30 | **Release 2** | 2018-06-13 A → 2018-06-01 14:00 A (-12d) | 2018-06-20 → 2018-06-05 16:00 A (-15d) | 4.75d → 2.25d | 18% → 100% | 0d → none |  |
| 31 | Implementar [RF07] Editar Mapa | 2018-06-13 A → 2018-06-01 14:00 A (-12d) | 2018-06-14 A → 2018-06-01 16:00 A (-13d) | 5h → 2h |  |  |  |
| 32 | Implementar [RF08] Remover Mapa | 2018-06-13 A → 2018-06-01 16:00 A (-12d) | 2018-06-14 A → 2018-06-04 09:00 A (-10d) | 5h → 2h |  |  | 29 → 31 |
| 33 | Implementar [RF09] Consultar Mapa | 2018-06-13 A → 2018-06-04 09:00 A (-9d) | 2018-06-14 A → 2018-06-04 11:00 A (-10d) | 5h → 2h |  |  | 29 → 32 |
| 34 | Implementar [RF10] Cadastrar Prateleira | 2018-06-13 → 2018-06-04 11:00 A (-9d) | 2018-06-18 → 2018-06-04 14:00 A (-14d) | 23h → 2h | 0% → 100% | 0d → none | 29 → 33 |
| 35 | Implementar [RF11] Editar Prateleira | 2018-06-18 → 2018-06-04 14:00 A (-14d) | 2018-06-19 → 2018-06-04 16:00 A (-15d) | 8h → 2h | 0% → 100% | 0.88d → none |  |
| 36 | Implementar [RF12] Consultar Prateleira | 2018-06-18 → 2018-06-04 16:00 A (-14d) | 2018-06-19 → 2018-06-05 09:00 A (-14d) | 9h → 2h | 0% → 100% | 0.75d → none | 34 → 35 |
| 37 | Implementar [RF13] Remover Prateleira | 2018-06-18 → 2018-06-05 09:00 A (-13d) | 2018-06-18 → 2018-06-05 11:00 A (-13d) | 5h → 2h | 0% → 100% | 1.25d → none | 34 → 36 |
| 38 | Implementar [RF14] Inserir Prateleira no Mapa | 2018-06-18 → 2018-06-05 11:00 A (-13d) | 2018-06-20 → 2018-06-05 14:00 A (-15d) | 15h → 2h | 0% → 100% | 0d → none | 34 → 37 |
| 39 | Implementar [RF15] Inserir Produtos na Prateleira | 2018-06-18 → 2018-06-05 14:00 A (-13d) | 2018-06-19 → 2018-06-05 16:00 A (-14d) | 10h → 2h | 0% → 100% | 0.62d → none | 34 → 38 |
| 40 | **Release 3** | 2018-06-20 → 2018-06-05 16:00 (-15d) | 2018-06-26 → 2018-06-07 09:00 (-19d) | 4.75d → 1.25d |  |  |  |
| 41 | Implementar [RF16] Remover Produto na Prateleira | 2018-06-20 → 2018-06-05 16:00 (-15d) | 2018-06-21 → 2018-06-06 09:00 (-15d) | 1d → 2h |  |  |  |
| 42 | Implementar [RF17] Atualizar Produto na Prateleira | 2018-06-20 → 2018-06-05 16:00 (-15d) | 2018-06-21 → 2018-06-06 09:00 (-15d) | 1d → 2h |  |  |  |
| 43 | Implementar [RF18] Consultar Produto | 2018-06-20 → 2018-06-05 16:00 (-15d) | 2018-06-21 → 2018-06-06 09:00 (-15d) | 1d → 2h |  |  |  |
| 44 | Implementar [RF19] Localizar Produto no Supermercado | 2018-06-21 → 2018-06-06 09:00 (-15d) | 2018-06-25 → 2018-06-06 14:00 (-19d) | 15h → 4h |  |  |  |
| 45 | Implementar [RF20] Calcular menor caminho para compras | 2018-06-25 → 2018-06-06 14:00 (-19d) | 2018-06-26 → 2018-06-07 09:00 (-19d) | 15h → 4h |  |  |  |
| 46 | **Release 4** | 2018-06-27 → 2018-06-07 09:00 (-20d) | 2018-07-03 → 2018-06-08 11:00 (-25d) | 4.75d → 1.25d |  |  |  |
| 47 | Implementar [RF21] Emissão do menor caminho | 2018-06-27 → 2018-06-07 09:00 (-20d) | 2018-06-28 → 2018-06-07 11:00 (-21d) | 15h → 2h |  |  |  |
| 48 | Implementar [RF22] Ranking de Produtos | 2018-06-27 → 2018-06-07 11:00 (-20d) | 2018-06-28 → 2018-06-07 16:00 (-21d) | 15h → 4h |  | 5.25d → 0d | 44 → 47 |
| 49 | Implementar [RF23] Relatório de itens mais visitados no supermercado | 2018-06-28 → 2018-06-07 16:00 (-21d) | 2018-07-03 → 2018-06-08 11:00 (-25d) | 23h → 4h |  |  | 47 → 48 |
| 50 | **Fechamento** | 2018-07-03 → 2018-06-08 11:00 (-25d) | 2018-07-06 → 2018-06-11 09:00 (-25d) | 2.38d → 0.75d |  |  |  |
| 51 | Documento de Aprovação do Cliente | 2018-07-03 → 2018-06-08 11:00 (-25d) | 2018-07-06 → 2018-06-11 09:00 (-25d) | 19h → 6h |  |  |  |

## Version 6 (saved 2018-06-11, file Cronograma.mpp)

Note of the change: Criando dropdowns, editando documentos e terminando prateleira

Last finish stays 2018-06-11. Complete tasks 27 → 29.

Removed: 12 Modelo entidade relacionamento; 13 Elaborar MER

Changed:

| ID | Task | Start | Finish | Duration | Complete | Total float | Other |
| --- | --- | --- | --- | --- | --- | --- | --- |
| 1 | **SuperMaps** |  |  |  | 69% → 75% |  |  |
| 10 | **Diagrama de Classes** |  | 2018-05-30 14:00 A → 2018-05-30 15:00 A | 0.25d → 0.38d |  |  |  |
| 11 | Elaborar Diagrama de Classes |  | 2018-05-30 14:00 A → 2018-05-30 15:00 A | 2h → 3h |  |  |  |
| 20 | **Desenvolvimento** |  |  |  | 58% → 68% |  |  |
| 38 | **Release 3** | 2018-06-05 16:00 A |  |  | 0% → 43% |  |  |
| 39 | Implementar [RF16] Remover Produto na Prateleira | 2018-06-05 16:00 A | 2018-06-06 09:00 A |  | 0% → 100% | 0d → none |  |
| 40 | Implementar [RF17] Editar Produto na Prateleira | 2018-06-05 16:00 A | 2018-06-06 09:00 A |  | 0% → 100% | 0d → none | was named Implementar [RF17] Atualizar Produto na Prateleira |
| 41 | Implementar [RF18] Consultar Produto | 2018-06-05 16:00 A | 2018-06-06 09:00 A |  | 0% → 100% | 0d → none |  |
